# 范围规划

Schedule from MS Project, 2020-02-20 to 2020-05-25, costs in ¥.

## Calendars

- 标准: Mon-Fri 08:00-12:00, 13:00-17:00; Sat-Sun off. Exceptions (off unless hours are given): 2020-03-07 08:00-12:00, 13:00-17:00, 2020-03-28 08:00-12:00, 13:00-17:00, 2020-04-12 08:00-12:00, 13:00-17:00.

## Resources

| Resource |
| --- |
| 项目经理 |
| UI设计师 |
| 技术专家 |
| 测试专家 |
| UI专家 |
| 设计专家 |
| 需求专家 |
| 质量专家 |
| 测试员1 |
| 程序员1 |
| 程序员2 |
| 程序员3 |
| 测试员2 |

## Schedule

| ID | WBS | Task | Type | Duration | Start | Finish | Predecessors | Total slack | Free slack | Constraint | Resources | Work | Cost |
| --- | --- | --- | --- | --- | --- | --- | --- | --- | --- | --- | --- | --- | --- |
| 1 | 1 | **启动** |  | 5d | 2020-02-20 | 2020-02-26 |  | 0d |  |  |  | 104h | 4,160 |
| 2 | 1.1 | 组建核心团队 |  | 1d | 2020-02-21 | 2020-02-21 |  | 1d |  | finish no earlier than 2020-02-20 | 项目经理; UI专家; 设计专家; 需求专家; 质量专家 | 40h | 1,480 |
| 3 | 1.2 | 干系人分析 |  | 1d | 2020-02-24 | 2020-02-24 |  | 0d |  |  | 项目经理 | 8h | 400 |
| 4 | 1.3 | 里程碑计划 |  | 1d | 2020-02-20 | 2020-02-20 |  | 2d |  |  | 项目经理 | 8h | 400 |
| 5 | 1.4 | 制定项目章程 |  | 1d | 2020-02-25 | 2020-02-25 | 2, 3, 4 | 0d |  |  | 项目经理 | 8h | 400 |
| 6 | 1.5 | 项目启动大会 |  | 1d | 2020-02-26 | 2020-02-26 | 5 | 0d |  |  | 项目经理; 需求专家; 设计专家; UI专家; 质量专家 | 40h | 1,480 |
| 7 | 2 | **规划** |  | 34d | 2020-02-25 | 2020-04-08 |  |  |  |  |  | 224h | 10,360 |
| 8 | 2.1 | **规划范围** |  | 8d | 2020-02-25 | 2020-03-05 |  |  |  |  |  | 48h | 2,040 |
| 9 | 2.1.1 | 制定需求说明书 |  | 1d | 2020-02-27 | 2020-02-27 | 6 | 0d |  |  | 需求专家 | 8h | 280 |
| 10 | 2.1.2 | 界面设计 |  | 1d | 2020-02-28 | 2020-02-28 | 9 | 1d |  |  | UI专家 | 8h | 280 |
| 11 | 2.1.3 | 详细设计说明书 |  | 1d | 2020-02-28 | 2020-02-28 | 9 | 1d |  |  | 设计专家 | 8h | 280 |
| 12 | 2.1.4 | 范围说明书 |  | 1d | 2020-03-02 | 2020-03-02 | 9 | 0d |  |  | 项目经理 | 8h | 400 |
| 13 | 2.1.5 | 创建WBS |  | 1d | 2020-03-04 | 2020-03-04 | 10, 11, 12 | 0d |  |  | 项目经理 | 8h | 400 |
| 14 | 2.1.6 | 形成范围基准 | manual | 1d | 2020-03-05 | 2020-03-05 | 13 |  |  |  | 项目经理 | 8h | 400 |
| 15 | 2.2 | **规划时间** |  | 9d | 2020-03-07 | 2020-03-18 |  |  |  |  |  | 40h | 2,000 |
| 16 | 2.2.1 | 排列工作包顺序 | manual | 1d | 2020-03-09 | 2020-03-09 | 14 |  |  |  | 项目经理 | 8h | 400 |
| 17 | 2.2.2 | 估算资源 |  | 1d | 2020-03-10 | 2020-03-10 | 16 | 0d |  |  | 项目经理 | 8h | 400 |
| 18 | 2.2.3 | 估算持续时间 |  | 1d | 2020-03-13 | 2020-03-13 | 17 | 0d |  |  | 项目经理 | 8h | 400 |
| 19 | 2.2.4 | 制定进度计划 |  | 1d | 2020-03-17 | 2020-03-17 | 18 | 0d |  |  | 项目经理 | 8h | 400 |
| 20 | 2.2.5 | 形成进度基准 |  | 1d | 2020-03-18 | 2020-03-18 | 19 | 0d |  |  | 项目经理 | 8h | 400 |
| 21 | 2.3 | **规划成本** |  | 3d | 2020-03-23 | 2020-03-25 |  |  |  |  |  | 24h | 1,200 |
| 22 | 2.3.1 | 项目成本估算 |  | 1d | 2020-03-23 | 2020-03-23 | 20 | 45d | 0d | start no earlier than 2020-03-23 | 项目经理 | 8h | 400 |
| 23 | 2.3.2 | 项目预算 |  | 1d | 2020-03-24 | 2020-03-24 | 22 | 45d | 0d | start no earlier than 2020-03-24 | 项目经理 | 8h | 400 |
| 24 | 2.3.3 | 形成范围基准 |  | 1d | 2020-03-25 | 2020-03-25 | 23 | 45d |  | start no earlier than 2020-03-25 | 项目经理 | 8h | 400 |

| ID | WBS | Task | Duration | Start | Finish | Predecessors | Total slack | Free slack | Constraint | Resources | Work | Cost |
| --- | --- | --- | --- | --- | --- | --- | --- | --- | --- | --- | --- | --- |
| 25 | 2.4 | **规划质量** | 3d | 2020-03-06 | 2020-03-09 |  |  |  |  |  | 24h | 720 |
| 26 | 2.4.1 | 制定测试计划 | 1d | 2020-03-06 | 2020-03-06 | 14 | 2d | 0d |  | 质量专家 | 8h | 240 |
| 27 | 2.4.2 | 制定测试用例 | 2d | 2020-03-07 | 2020-03-09 | 26 | 57d |  | start no earlier than 2020-03-07 | 质量专家 | 16h | 480 |
| 28 | 2.5 | **规划人力资源** | 5d | 2020-03-10 | 2020-03-16 |  |  |  |  |  | 24h | 1,200 |
| 29 | 2.5.1 | 制定人力资源计划 | 1d | 2020-03-11 | 2020-03-11 |  | 0d |  | start no earlier than 2020-03-10 | 项目经理 | 8h | 400 |
| 30 | 2.5.2 | 制定人员配备管理计划 | 2d | 2020-03-12 | 2020-03-16 | 29 | 0d |  |  | 项目经理 | 16h | 800 |
| 31 | 2.6 | **规划沟通** | 1d | 2020-03-19 | 2020-03-19 |  |  |  |  |  | 8h | 400 |
| 32 | 2.6.1 | 制定沟通管理计划 | 1d | 2020-03-19 | 2020-03-19 | 30 | 49d |  | start no earlier than 2020-03-17 | 项目经理 | 8h | 400 |
| 33 | 2.7 | **规划采购** | 2d | 2020-03-28 | 2020-03-30 |  |  |  |  |  | 16h | 800 |
| 34 | 2.7.1 | 自制外购分析 | 1d | 2020-03-28 | 2020-03-28 | 17 | 41d | 0d | start no earlier than 2020-03-28 | 项目经理 | 8h | 400 |
| 35 | 2.7.2 | 定制采购文件 | 1d | 2020-03-30 | 2020-03-30 | 34 | 41d |  | finish no earlier than 2020-02-20 | 项目经理 | 8h | 400 |
| 36 | 2.8 | **规划风险** | 10d | 2020-03-26 | 2020-04-07 |  | 1d |  |  |  | 32h | 1,600 |
| 37 | 2.8.1 | 识别风险 | 1d | 2020-03-26 | 2020-03-26 | 15, 21, 25, 28 | 7d | 0d |  | 项目经理 | 8h | 400 |
| 38 | 2.8.2 | 风险分析 | 1d | 2020-03-27 | 2020-03-27 | 37 | 7d | 6d |  | 项目经理 | 8h | 400 |
| 39 | 2.8.3 | 制定风险登记表 | 2d | 2020-04-06 | 2020-04-07 | 38 | 1d | 0d | start no earlier than 2020-04-04 | 项目经理 | 16h | 800 |
| 40 | 2.9 | 规划整合 | 1d | 2020-04-08 | 2020-04-08 | 39 | 34d |  | start no earlier than 2020-03-08 | 项目经理 | 8h | 400 |
| 41 | 3 | **执行与监控** | 31d | 2020-04-09 | 2020-05-20 |  |  |  |  |  | 768h | 25,960 |
| 42 | 3.1 | 组建项目团队 | 3d | 2020-04-14 | 2020-04-16 | 7 | 0d |  | start no earlier than 2020-04-09 | 项目经理; 测试员1; 测试员2; 程序员1; 程序员2 | 120h | 3,984 |
| 43 | 3.2 | **项目执行** | 24d | 2020-04-13 | 2020-05-14 |  |  |  |  |  | 120h | 3,568 |
| 44 | 3.2.1 | **用户模块** | 21d | 2020-04-16 | 2020-05-14 |  |  |  |  |  | 104h | 3,088 |
| 45 | 3.2.1.1 | 注册登录 | 1d | 2020-04-24 | 2020-04-24 | 42 | 0d |  |  | 程序员1 | 8h | 240 |
| 46 | 3.2.1.2 | 首页 | 1d | 2020-04-27 | 2020-04-27 | 45 | 0d |  |  | 程序员1 | 8h | 240 |
| 47 | 3.2.1.3 | 检测皮肤状态 | 1d | 2020-04-28 | 2020-04-28 | 46 | 0d |  |  | 程序员1 | 8h | 240 |
| 48 | 3.2.1.4 | 推荐产品 | 1d | 2020-04-30 | 2020-04-30 | 47 | 0d |  |  | 测试员1 | 8h | 224 |
| 49 | 3.2.1.5 | 产品成分详情分析 | 1d | 2020-05-01 | 2020-05-01 | 48 | 0d |  |  | 测试员1 | 8h | 224 |
| 50 | 3.2.1.6 | 聊天 | 1d | 2020-05-04 | 2020-05-04 | 49 | 0d |  |  | 程序员1 | 8h | 240 |
| 51 | 3.2.1.7 | 种草社区 | 1d | 2020-05-05 | 2020-05-05 | 50 | 0d |  |  | 程序员1 | 8h | 240 |
| 52 | 3.2.1.8 | 皮肤分析报告 | 1d | 2020-05-06 | 2020-05-06 | 51 | 0d |  |  | 程序员2 | 8h | 240 |
| 53 | 3.2.1.9 | 我的 | 2d | 2020-05-07 | 2020-05-11 | 52 | 0d |  |  | 程序员2 | 16h | 480 |
| 54 | 3.2.1.10 | 历史肤质 | 1d | 2020-05-12 | 2020-05-12 | 53 | 0d |  |  | 程序员2 | 8h | 240 |
| 55 | 3.2.1.11 | 收藏的帖子 | 1d | 2020-05-13 | 2020-05-13 | 54 | 0d |  |  | 程序员2 | 8h | 240 |
| 56 | 3.2.1.12 | 关注的品牌 | 1d | 2020-05-14 | 2020-05-14 | 55 | 0d |  |  | 程序员2 | 8h | 240 |

| ID | WBS | Task | Duration | Start | Finish | Predecessors | Total slack | Free slack | Constraint | Resources | Work | Cost |
| --- | --- | --- | --- | --- | --- | --- | --- | --- | --- | --- | --- | --- |
| 57 | 3.2.2 | **商家模块** | 4d | 2020-04-17 | 2020-04-22 |  |  |  |  |  | 16h | 480 |
| 58 | 3.2.2.1 | 优惠券推荐 | 2d | 2020-04-21 | 2020-04-22 | 42 | 0d |  |  | 程序员2 | 16h | 480 |
| 59 | 3.3 | **项目监控** | 13d | 2020-04-16 | 2020-05-05 |  | 11d |  |  |  | 128h | 4,216 |
| 60 | 3.3.1 | 各项指标监控 | 1d | 2020-04-22 | 2020-04-22 | 42 | 11d | 0d | finish no earlier than 2020-04-22 | 测试员1; 项目经理; 测试员2 | 16h | 448 |
| 61 | 3.3.2 | 监控评审 | 2d | 2020-04-28 | 2020-05-04 | 60 | 11d | 0d |  | 设计专家; 项目经理; 需求专家; 质量专家 | 32h | 1,200 |
| 62 | 3.3.3 | 变更评审 | 1d | 2020-05-04 | 2020-05-05 | 61 | 11d |  | finish no earlier than 2020-05-01 | 设计专家; 项目经理; 需求专家; 质量专家 | 24h | 800 |
| 63 | 3.3.4 | 例会 | 2d | 2020-04-16 | 2020-04-27 | 42 | 17d |  |  | UI专家; 测试员1; 测试员2; 程序员1; 程序员2; 设计专家; 项目经理; 需求专家; 质量专家 | 56h | 1,768 |
| 64 | 3.4 | **管理干系人** | 11d | 2020-04-24 | 2020-05-08 |  |  |  |  |  | 24h | 1,200 |
| 65 | 3.4.1 | 发布项目信息 | 1d | 2020-05-07 | 2020-05-07 | 42 | 12d |  | start no earlier than 2020-04-21 | 项目经理 | 8h | 400 |
| 66 | 3.4.2 | 报告监控指标 | 1d | 2020-04-24 | 2020-04-24 | 42 | 21d |  | start no earlier than 2020-04-21 | 项目经理 | 8h | 400 |
| 67 | 3.4.3 | 干系人沟通 | 1d | 2020-04-23 | 2020-04-23 | 42 | 22d |  | start no earlier than 2020-04-21 | 项目经理 | 8h | 400 |
| 68 | 3.5 | **团队建设** | 18d | 2020-04-09 | 2020-05-01 |  |  |  |  |  | 280h | 9,232 |
| 69 | 3.5.1 | 培训 | 4d | 2020-04-22 | 2020-04-29 | 42 | 18d |  | start no earlier than 2020-04-09 | UI专家; 测试员1; 测试员2; 程序员1; 程序员2; 设计专家; 项目经理; 需求专家; 质量专家 | 72h | 2,408 |
| 70 | 3.5.2 | 娱乐活动 | 5d | 2020-04-20 | 2020-05-01 | 42 | 16d |  | start no earlier than 2020-04-10 | UI专家; 测试员1; 测试员2; 程序员1; 程序员2; 设计专家; 项目经理; 需求专家; 质量专家 | 144h | 4,816 |
| 71 | 3.5.3 | 沟通 | 1d | 2020-04-16 | 2020-04-17 | 42 | 26d |  | start no earlier than 2020-04-13 | UI专家; 测试员1; 测试员2; 程序员1; 程序员2; 设计专家; 项目经理; 需求专家; 质量专家 | 64h | 2,008 |
| 72 | 3.6 | 采购 | 2d | 2020-04-17 | 2020-04-20 | 42 | 22d |  |  | 项目经理 | 16h | 800 |
| 73 | 3.7 | 项目验收 | 2d | 2020-04-21 | 2020-04-22 |  | 20d | 19d | start no earlier than 2020-04-21 | UI专家; 设计专家; 项目经理; 需求专家; 质量专家 | 80h | 2,960 |
| 74 | 4 | **收尾** | 4d | 2020-05-20 | 2020-05-25 |  |  |  |  |  | 120h | 4,288 |
| 75 | 4.1 | 项目终验 | 2d | 2020-05-21 | 2020-05-22 | 73 | 1d |  |  | UI专家; 设计专家; 项目经理; 需求专家; 质量专家 | 40h | 1,480 |
| 76 | 4.2 | 结束采购 | 1d | 2020-05-20 | 2020-05-20 | 73 | 3d |  |  | 项目经理 | 8h | 400 |
| 77 | 4.3 | 项目内部收尾 | 1d | 2020-05-25 | 2020-05-25 |  | 0d |  | start no earlier than 2020-05-25 | UI专家; 测试员1; 测试员2; 程序员1; 程序员2; 设计专家; 项目经理; 需求专家; 质量专家 | 72h | 2,408 |
